Schedule from MS Project, 2010-12-01 to 2013-03-05, A marks actual dates.

## Calendars

- Standard: Mon-Fri 08:00-12:00, 13:00-17:00; Sat-Sun off. Exceptions (off unless hours are given): 2012-09-15 08:00-12:00, 13:00-17:00.

## Resources

| Resource |
| --- |
| 钟格致 |
| 郑玲 |
| 蔡钟毅 |
| 陶卫 |
| 卜晓锋 |
| 金广亮 |
| 徐蓓 |
| 王薪杰 |
| 王渝友 |
| 胥鑫 |
| 徐兵 |
| 汤仕海 |

## Schedule

| ID | WBS | Task | Type | Duration | Start | Finish | Complete | Remaining | Total slack | Resources | Work | Actual work |
| --- | --- | --- | --- | --- | --- | --- | --- | --- | --- | --- | --- | --- |
| 1 | 1 | **SavorBUS** |  | 241d | 2012-01-01 A | 2012-12-01 | 43% | 138.25d | 0d | 卜晓锋; 钟格致; 陶卫; 蔡钟毅; 郑玲 | 11624h | 4973.02h |
| 2 | 1.1 | BUS系统前期规划 | manual | 110d | 2012-01-01 A | 2012-05-31 A | 100% |  |  | 钟格致 | 880h | 880h |
| 3 | 1.2 | **第一阶段页面及功能** |  | 101d | 2012-07-16 | 2012-12-01 |  |  | 0d |  | 1104h |  |
| 4 | 1.2.1 | 补BUS系统详细设计 | manual | 67d | 2012-09-01 | 2012-12-01 |  |  |  | 钟格致 | 536h |  |
| 5 | 1.2.2 | BUS系统数据库设计 | manual | 11d | 2012-07-21 | 2012-08-03 |  |  |  | 陶卫 | 88h |  |
| 6 | 1.2.3 | **BUS系统页面设计** |  | 7d | 2012-07-16 | 2012-07-24 |  |  | 0d |  | 176h |  |
| 7 | 1.2.3.1 | 设计风格确定 | manual | 2d | 2012-07-21 | 2012-07-22 |  |  |  | 郑玲; 钟格致 | 32h |  |
| 8 | 1.2.3.2 | bus_account_login | manual | 2d | 2012-07-22 | 2012-07-23 |  |  |  | 郑玲 | 16h |  |
| 9 | 1.2.3.3 | bus_account_edit_password | manual | 2d | 2012-07-22 | 2012-07-23 |  |  |  | 郑玲 | 16h |  |
| 10 | 1.2.3.4 | bus_account_edit_signature | manual | 2d | 2012-07-22 | 2012-07-23 |  |  |  | 郑玲 | 16h |  |
| 11 | 1.2.3.5 | bus_account_find_password | manual | 2d | 2012-07-22 | 2012-07-23 |  |  |  | 郑玲 | 16h |  |
| 12 | 1.2.3.6 | bus_account_find_signature | manual | 2d | 2012-07-22 | 2012-07-23 |  |  |  | 郑玲 | 16h |  |
| 13 | 1.2.3.7 | bus_account_security_protection | manual | 2d | 2012-07-22 | 2012-07-23 |  |  |  | 郑玲 | 16h |  |
| 14 | 1.2.3.8 | bus_admin_savorboard_configuration | manual | 2d | 2012-07-23 | 2012-07-24 |  |  |  | 郑玲 | 16h |  |
| 15 | 1.2.3.9 | bus_admin_savorboard_db | manual | 2d | 2012-07-23 | 2012-07-24 |  |  |  | 郑玲 | 16h |  |
| 16 | 1.2.3.10 | bus_admin_savorboard_log | manual | 2d | 2012-07-16 | 2012-07-17 |  |  |  | 郑玲 | 16h |  |
| 17 | 1.2.4 | **BUS系统页面切图** |  | 3d | 2012-07-25 | 2012-07-28 |  |  | 0d |  | 144h |  |
| 18 | 1.2.4.1 | bus_account_login | manual | 2d | 2012-07-25 | 2012-07-26 |  |  |  | 蔡钟毅 | 16h |  |
| 19 | 1.2.4.2 | bus_account_edit_password | manual | 2d | 2012-07-25 | 2012-07-26 |  |  |  | 蔡钟毅 | 16h |  |
| 20 | 1.2.4.3 | bus_account_edit_signature | manual | 2d | 2012-07-25 | 2012-07-26 |  |  |  | 蔡钟毅 | 16h |  |
| 21 | 1.2.4.4 | bus_account_find_password | manual | 2d | 2012-07-26 | 2012-07-27 |  |  |  | 蔡钟毅 | 16h |  |
| 22 | 1.2.4.5 | bus_account_find_signature | manual | 2d | 2012-07-26 | 2012-07-27 |  |  |  | 蔡钟毅 | 16h |  |
| 23 | 1.2.4.6 | bus_account_security_protection | manual | 2d | 2012-07-26 | 2012-07-27 |  |  |  | 蔡钟毅 | 16h |  |
| 24 | 1.2.4.7 | bus_admin_savorboard_configuration | manual | 2d | 2012-07-27 | 2012-07-28 |  |  |  | 蔡钟毅 | 16h |  |
| 25 | 1.2.4.8 | bus_admin_savorboard_db | manual | 2d | 2012-07-27 | 2012-07-28 |  |  |  | 蔡钟毅 | 16h |  |
| 26 | 1.2.4.9 | bus_admin_savorboard_log | manual | 2d | 2012-07-27 | 2012-07-28 |  |  |  | 蔡钟毅 | 16h |  |

| ID | WBS | Task | Type | Duration | Start | Finish | Predecessors | Complete | Remaining | Total slack | Constraint | Resources | Work | Actual work |
| --- | --- | --- | --- | --- | --- | --- | --- | --- | --- | --- | --- | --- | --- | --- |
| 27 | 1.2.5 | **BUS系统功能编码** |  | 14d | 2012-08-03 | 2012-08-22 |  |  |  | 0d |  |  |  |  |
| 28 | 1.2.5.1 | 登陆，账号系统 | manual | 6d | 2012-08-03 | 2012-08-10 |  |  |  |  |  |  |  |  |
| 29 | 1.2.5.2 | 玩儿道维护模块 | manual | 9d | 2012-08-10 | 2012-08-22 |  |  |  |  |  |  |  |  |
| 30 | 1.2.6 | **BUS系统测试** |  | 12d | 2012-08-23 | 2012-09-08 |  |  |  | 0d |  |  | 160h |  |
| 31 | 1.2.6.1 | 服务器发布 | manual | 3d | 2012-08-23 | 2012-08-25 |  |  |  |  |  | 钟格致; 陶卫 | 48h |  |
| 32 | 1.2.6.2 | 功能测试 | manual | 7d | 2012-08-25 | 2012-09-02 |  |  |  |  |  | 卜晓锋 | 56h |  |
| 33 | 1.2.6.3 | 测试检查 | manual | 7d | 2012-09-02 | 2012-09-08 |  |  |  |  |  | 钟格致 | 56h |  |
| 34 | 2 | **Savorboard** |  | 591d? | 2010-12-01 A | 2013-03-05 |  | 20% | 471.76d? | 0d |  |  | 15704h | 448h |
| 35 | 2.1 | 第一阶段第一期开发 |  | 196d? | 2010-12-01 A | 2011-08-31 A |  | 100% |  |  | finish no earlier than 2011-08-31 |  |  |  |
| 36 | 2.2 | 第一阶段第二期开发 | manual | 279d | 2011-09-01 | 2012-09-24 | 35 |  |  |  |  |  |  |  |
| 37 | 2.3 | **第一阶段第三期开发** |  | 229d | 2012-04-20 A | 2013-03-05 |  | 7% | 212.43d | 0d |  |  | 15704h | 448h |
| 38 | 2.3.1 | 意见采集及开发规划确定 | manual | 56d | 2012-04-20 A | 2012-07-06 A |  | 100% |  |  |  | 钟格致 | 448h | 448h |
| 39 | 2.3.2 | 开发计划及详细设计 | manual | 25d | 2012-09-07 | 2012-10-10 |  |  |  |  |  | 钟格致 | 200h |  |
| 40 | 2.3.3 | 接口文档整理，单元测试编写 | manual | 16d | 2012-09-24 | 2012-10-14 |  |  |  |  |  | 卜晓锋; 金广亮; 徐蓓; 胥鑫; 王薪杰; 王渝友; 钟格致 | 896h |  |
| 41 | 2.3.4 | 突发情况预案储备 | manual | 67d | 2012-10-01 | 2013-01-01 |  |  |  |  |  | 钟格致; 金广亮; 徐蓓; 陶卫 | 2144h |  |
| 42 | 2.3.5 | 新框架设计及改进 | manual | 12d | 2012-07-15 | 2012-07-29 |  |  |  |  |  | 金广亮; 王薪杰; 卜晓锋; 王渝友; 胥鑫; 徐蓓; 徐兵 | 672h |  |
| 43 | 2.3.6 | 研究站内推技术 | manual | 13d | 2012-08-23 | 2012-09-10 |  |  |  |  |  | 钟格致; 金广亮 | 208h |  |
| 44 | 2.3.7 | 补全圈子活动资金流程图 | manual | 6d | 2012-08-27 | 2012-09-03 |  |  |  |  |  | 钟格致 | 48h |  |
| 45 | 2.3.8 | 设计服务器报错页面 | manual | 10d | 2012-11-20 | 2012-12-03 |  |  |  |  |  | 郑玲 | 80h |  |
| 46 | 2.3.9 | 服务器添加均衡负载和缓存服务器 | manual | 8d | 2012-11-01 | 2012-11-12 |  |  |  |  |  | 钟格致 | 64h |  |
| 47 | 2.3.10 | **设计及开发** |  | 99d | 2012-08-23 | 2013-01-07 |  |  |  | 0d |  |  | 8192h |  |
| 48 | 2.3.10.1 | 前台Ajax框架 | manual | 11d | 2012-10-01 | 2012-10-14 |  |  |  |  |  | 徐蓓 | 88h |  |
| 49 | 2.3.10.2 | **页面静态化** |  | 33d | 2012-08-23 | 2012-10-07 |  |  |  | 0d |  |  | 392h |  |
| 50 | 2.3.10.2.1 | 页面静态化-计划及方法 | manual | 8d | 2012-08-23 | 2012-09-03 |  |  |  |  |  | 金广亮; 徐蓓 | 128h |  |
| 51 | 2.3.10.2.2 | 页面静态化-编码 | manual | 11d | 2012-09-24 | 2012-10-07 |  |  |  |  |  | 王薪杰; 胥鑫; 王渝友 | 264h |  |

Notes:
- 39: 多语言过滤器
- 44: 补全圈子活动资金流程图到详细设计
- 45: 401，403，404，405,406,412，500，501，502报错页面设计
- 48: 管理Ajax请求顺序，以及连接超时重连

| ID | WBS | Task | Type | Duration | Start | Finish | Total slack | Constraint | Resources | Work |
| --- | --- | --- | --- | --- | --- | --- | --- | --- | --- | --- |
| 52 | 2.3.10.3 | **数据采集设计** |  | 28d | 2012-09-03 | 2012-10-09 | 0d |  |  | 168h |
| 53 | 2.3.10.3.1 | 数据采集设计-网站页面模块编号 | manual | 6d | 2012-09-03 | 2012-09-10 |  |  | 钟格致 | 48h |
| 54 | 2.3.10.3.2 | 数据采集设计-数据库设计 | manual | 6d | 2012-09-03 | 2012-09-10 |  |  | 陶卫 | 48h |
| 55 | 2.3.10.3.3 | 数据采集设计-编码 | manual | 3d | 2012-10-07 | 2012-10-09 |  |  | 胥鑫; 徐蓓; 徐兵 | 72h |
| 56 | 2.3.10.4 | **修正优化页面** |  | 33d | 2012-09-03 | 2012-10-16 | 0d |  |  | 1616h |
| 57 | 2.3.10.4.1 | 修正优化页面-整理文档 | manual | 6d | 2012-09-03 | 2012-09-10 |  |  | 钟格致 | 48h |
| 58 | 2.3.10.4.2 | 修正优化页面-设计及前端 | manual | 12d | 2012-09-10 | 2012-09-24 |  |  | 郑玲; 蔡钟毅 | 192h |
| 59 | 2.3.10.4.3 | 修正优化页面-编码 | manual | 17d | 2012-09-24 | 2012-10-16 |  |  | 王渝友; 王薪杰; 陶卫; 徐蓓; 胥鑫 | 680h |
| 60 | 2.3.10.4.4 | 网站日志文字统一更改为日记 | manual | 17d | 2012-09-24 | 2012-10-16 |  |  | 王薪杰 | 136h |
| 61 | 2.3.10.4.5 | **个人资料名片的重新设计** |  | 28d | 2012-09-10 | 2012-10-16 | 0d |  |  | 560h |
| 62 | 2.3.10.4.5.1 | 个人资料名片的重新设计-设计及前端 | manual | 12d | 2012-09-10 | 2012-09-24 |  |  | 王薪杰; 蔡钟毅; 徐蓓 | 288h |
| 63 | 2.3.10.4.5.2 | 个人资料名片的重新设计-编码 | manual | 17d | 2012-09-24 | 2012-10-16 |  |  | 王薪杰; 徐蓓 | 272h |
| 64 | 2.3.10.5 | 添加网站列表排序下拉 | manual | 4d | 2012-10-17 | 2012-10-21 |  | start no earlier than 2012-10-17 | 胥鑫; 徐蓓; 徐兵 | 96h |
| 65 | 2.3.10.6 | 网站页面跳转无空白 | manual | 12d | 2012-10-21 | 2012-11-05 |  | start no earlier than 2012-10-21 | 金广亮; 王薪杰; 胥鑫; 王渝友; 蔡钟毅 | 480h |
| 66 | 2.3.10.7 | **非支持浏览器提示** |  | 28d | 2012-09-27 | 2012-11-05 | 0d |  |  | 40h |
| 67 | 2.3.10.7.1 | 非支持浏览器提示-设计及前端 | manual | 2d | 2012-09-27 | 2012-09-28 |  | start no earlier than 2012-09-27 | 郑玲; 蔡钟毅 | 32h |
| 68 | 2.3.10.7.2 | 非支持浏览器提示-添加 | manual | 1d | 2012-11-05 | 2012-11-05 |  |  | 王薪杰 | 8h |
| 69 | 2.3.10.8 | **广告通知系统** |  | 40d | 2012-09-16 | 2012-11-09 | 0d |  |  | 168h |
| 70 | 2.3.10.8.1 | 广告通知系统-设计前端 | manual | 2d | 2012-09-27 | 2012-09-28 |  |  | 郑玲; 蔡钟毅 | 32h |
| 71 | 2.3.10.8.2 | 广告通知系统-数据库设计 | manual | 5d | 2012-09-16 | 2012-09-20 |  |  | 陶卫 | 40h |
| 72 | 2.3.10.8.3 | 广告通知系统-编码 | manual | 4d | 2012-11-05 | 2012-11-08 |  |  | 王薪杰; 徐蓓 | 64h |
| 73 | 2.3.10.8.4 | 广告通知系统-首次登陆现地址采集提示 | manual | 2d | 2012-11-08 | 2012-11-09 |  |  | 王薪杰; 徐蓓 | 32h |
| 74 | 2.3.10.9 | **页面多种显示模式选择** |  | 31d | 2012-10-07 | 2012-11-19 | 0d |  |  | 152h |
| 75 | 2.3.10.9.1 | 页面多种显示模式选择-前端 | manual | 7d | 2012-10-07 | 2012-10-14 |  |  | 蔡钟毅 | 56h |
| 76 | 2.3.10.9.2 | 页面多种显示模式选择-编码 | manual | 6d | 2012-11-12 | 2012-11-19 |  |  | 王薪杰; 徐蓓 | 96h |
| 77 | 2.3.10.10 | 内容对图片和链接的支持 | manual | 6d | 2012-11-19 | 2012-11-26 |  |  | 徐蓓; 王薪杰 | 96h |

Notes:
- 56: 修正所有页面的细节设计或者优化修改，包括文字，图标，下拉，按钮，状态栏，提示栏，间隔，模块结构，版面
- 74: 日志，活动感想，动态更新页面增加多种显示模式选择
- 77: 日志，站内信息，活动感想对图片和链接的支持

| ID | WBS | Task | Type | Duration | Start | Finish | Total slack | Constraint | Resources | Work |
| --- | --- | --- | --- | --- | --- | --- | --- | --- | --- | --- |
| 78 | 2.3.10.11 | **用户习惯系统** |  | 56d | 2012-09-21 | 2012-12-07 | 0d |  |  | 272h |
| 79 | 2.3.10.11.1 | 用户习惯系统-数据库设计 | manual | 4d | 2012-09-21 | 2012-09-26 |  |  | 陶卫 | 32h |
| 80 | 2.3.10.11.2 | 用户习惯系统-编码 | manual | 10d | 2012-11-26 | 2012-12-07 |  |  | 王薪杰; 徐蓓; 蔡钟毅 | 240h |
| 81 | 2.3.10.12 | **个人资料学校和工作通过弹出框进行选择** |  | 22d | 2012-11-08 | 2012-12-09 | 0d |  |  | 80h |
| 82 | 2.3.10.12.1 | 个人资料学校和工作通过弹出框进行选择-选择弹出框 | manual | 3d | 2012-11-08 | 2012-11-12 |  |  | 金广亮; 蔡钟毅 | 48h |
| 83 | 2.3.10.12.2 | 个人资料学校和工作通过弹出框进行选择-编码 | manual | 2d | 2012-12-07 | 2012-12-09 |  |  | 王薪杰; 徐蓓 | 32h |
| 84 | 2.3.10.13 | **首次登陆及新功能提示** |  | 81d | 2012-09-10 | 2012-12-30 | 0d |  |  | 232h |
| 85 | 2.3.10.13.1 | 首次登陆及新功能提示-设计 | manual | 9d | 2012-12-19 | 2012-12-30 |  |  | 郑玲 | 72h |
| 86 | 2.3.10.13.2 | 首次登陆及新功能提示-数据库设计 | manual | 6d | 2012-09-10 | 2012-09-15 |  |  | 陶卫 | 48h |
| 87 | 2.3.10.13.3 | 首次登陆及新功能提示-添加教程 | manual | 4d | 2012-12-09 | 2012-12-12 |  |  | 王薪杰; 徐蓓 | 64h |
| 88 | 2.3.10.13.4 | 站内信息，邀请过期以后，标准为已读 | manual | 3d | 2012-12-27 | 2012-12-29 |  |  | 王薪杰; 徐蓓 | 48h |
| 89 | 2.3.10.14 | **圈子事件动态流程图** |  | 21d | 2012-10-21 | 2012-11-19 | 0d |  |  | 184h |
| 90 | 2.3.10.14.1 | 圈子事件动态流程图-设计及前端 | manual | 6d | 2012-10-21 | 2012-10-26 |  | start no earlier than 2012-10-21 | 蔡钟毅; 郑玲 | 96h |
| 91 | 2.3.10.14.2 | 圈子事件动态流程图-嵌入 | manual | 11d | 2012-11-05 | 2012-11-19 |  |  | 胥鑫 | 88h |
| 92 | 2.3.10.15 | **圈子任务指派功能，并与预算和财务模块结合** |  | 26d | 2012-10-26 | 2012-12-02 | 0d |  |  | 168h |
| 93 | 2.3.10.15.1 | 圈子任务指派功能-设计 | manual | 5d | 2012-10-26 | 2012-11-01 |  |  | 郑玲; 蔡钟毅 | 80h |
| 94 | 2.3.10.15.2 | 圈子任务指派功能-编码 | manual | 11d | 2012-11-19 | 2012-12-02 |  |  | 胥鑫 | 88h |
| 95 | 2.3.10.16 | 增加圈子是否可以浏览流水账选项 | manual | 3d | 2012-12-05 | 2012-12-07 |  |  | 胥鑫 | 24h |
| 96 | 2.3.10.17 | 增加圈子中的是否开放和是否隐藏双选项 | manual | 4d | 2012-12-07 | 2012-12-12 |  |  | 胥鑫; 徐蓓 | 64h |
| 97 | 2.3.10.18 | **圈子多财务多方式多账号支持** |  | 57d | 2012-09-27 | 2012-12-16 | 0d |  |  | 88h |
| 98 | 2.3.10.18.1 | 圈子多财务多方式多账号支持-设计 | manual | 2d | 2012-11-02 | 2012-11-03 |  |  | 蔡钟毅; 郑玲 | 32h |
| 99 | 2.3.10.18.2 | 圈子多财务多方式多账号支持-数据库设计 | manual | 3d | 2012-09-27 | 2012-09-29 |  |  | 陶卫 | 24h |
| 100 | 2.3.10.18.3 | 圈子多财务多方式多账号支持-编程 | manual | 4d | 2012-12-12 | 2012-12-16 |  |  | 胥鑫 | 32h |
| 101 | 2.3.10.19 | **增加圈子财务修改记录** |  | 35d | 2012-11-03 | 2012-12-23 | 0d |  |  | 64h |
| 102 | 2.3.10.19.1 | 增加圈子财务修改记录-设计 | manual | 2d | 2012-11-03 | 2012-11-05 |  |  | 蔡钟毅; 郑玲 | 32h |
| 103 | 2.3.10.19.2 | 增加圈子财务修改记录-编码 | manual | 4d | 2012-12-19 | 2012-12-23 |  |  | 胥鑫 | 32h |
| 104 | 2.3.10.20 | 活动增加有意义的序号 | manual | 6d | 2012-12-01 | 2012-12-07 |  |  | 徐兵; 王渝友 | 96h |

Notes:
- 78: 日志，活动感想，动态更新增加用户自定义调节背景，字体，字体大小，颜色搭配，排版方式等不同阅读习惯的设置并能保存到用户习惯保存系统

| ID | WBS | Task | Type | Duration | Start | Finish | Total slack | Resources | Work |
| --- | --- | --- | --- | --- | --- | --- | --- | --- | --- |
| 105 | 2.3.10.21 | **重新设计活动创建架构** |  | 11d | 2012-11-05 | 2012-11-19 | 0d |  | 448h |
| 106 | 2.3.10.21.1 | 重新设计活动创建架构-设计及前端 | manual | 6d | 2012-11-05 | 2012-11-12 |  | 郑玲; 蔡钟毅 | 96h |
| 107 | 2.3.10.21.2 | 重新设计活动创建架构-编码 | manual | 11d | 2012-11-05 | 2012-11-19 |  | 徐蓓; 金广亮; 徐兵; 王渝友 | 352h |
| 108 | 2.3.10.22 | **活动地图综合浏览图** |  | 20d | 2012-11-12 | 2012-12-09 | 0d |  | 608h |
| 109 | 2.3.10.22.1 | 活动地图综合浏览图-设计 | manual | 6d | 2012-11-12 | 2012-11-19 |  | 蔡钟毅; 郑玲 | 96h |
| 110 | 2.3.10.22.2 | 活动地图综合浏览图-编码 | manual | 16d | 2012-11-19 | 2012-12-09 |  | 徐蓓; 王渝友; 徐兵; 金广亮 | 512h |
| 111 | 2.3.10.23 | **活动任务指派功能，并与预算及财务模块结合** |  | 10d | 2012-11-19 | 2012-12-02 | 0d |  | 224h |
| 112 | 2.3.10.23.1 | 活动任务指派-设计 | manual | 5d | 2012-11-19 | 2012-11-23 |  | 蔡钟毅; 郑玲 | 80h |
| 113 | 2.3.10.23.2 | 活动任务指派-编码 | manual | 6d | 2012-11-26 | 2012-12-02 |  | 金广亮; 王渝友; 徐兵 | 144h |
| 114 | 2.3.10.24 | 增加活动是否对活动内显示预算选项 | manual | 4d | 2012-12-02 | 2012-12-05 |  | 王渝友; 徐兵; 金广亮 | 96h |
| 115 | 2.3.10.25 | 增加活动基本设置中的双选项，是否开放，是否隐藏 | manual | 4d | 2012-12-05 | 2012-12-08 |  | 金广亮; 徐兵; 王渝友 | 96h |
| 116 | 2.3.10.26 | 对于活动成员列表，是否到达参加，管理员可以添加标注和备注 | manual | 4d | 2012-12-08 | 2012-12-12 |  | 金广亮; 王渝友; 徐兵 | 96h |
| 117 | 2.3.10.27 | 活动计划列表随着日期的变化，使用显示时滚动跟随变化 | manual | 4d | 2012-12-08 | 2012-12-12 |  | 王渝友 | 32h |
| 118 | 2.3.10.28 | 活动时间点调整，进行中活动归入历史活动中 | manual | 4d | 2012-12-08 | 2012-12-12 |  | 金广亮; 王渝友; 徐兵 | 96h |
| 119 | 2.3.10.29 | **活动计划列表修改** |  | 55d | 2012-09-29 | 2012-12-14 | 0d |  | 128h |
| 120 | 2.3.10.29.1 | 活动计划列表修改-设计 | manual | 2d | 2012-11-23 | 2012-11-25 |  | 蔡钟毅; 郑玲 | 32h |
| 121 | 2.3.10.29.2 | 活动计划列表修改-数据库设计 | manual | 3d | 2012-09-29 | 2012-10-02 |  | 陶卫 | 24h |
| 122 | 2.3.10.29.3 | 活动计划列表修改-编码 | manual | 3d | 2012-12-12 | 2012-12-14 |  | 王渝友; 金广亮; 徐兵 | 72h |
| 123 | 2.3.10.30 | **活动打印模块根据角色重新设计** |  | 19d | 2012-11-23 | 2012-12-19 | 0d |  | 304h |
| 124 | 2.3.10.30.1 | 活动打印模块根据角色重新设计-设计 | manual | 7d | 2012-11-23 | 2012-12-02 |  | 蔡钟毅; 郑玲 | 112h |
| 125 | 2.3.10.30.2 | 活动打印模块根据角色重新设计-编码 | manual | 4d | 2012-12-14 | 2012-12-19 |  | 金广亮; 徐兵; 王渝友 | 96h |
| 126 | 2.3.10.30.3 | 我的活动增加个人活动自定义时间段安排的打印 | manual | 4d | 2012-12-14 | 2012-12-19 |  | 金广亮; 王渝友; 徐兵 | 96h |
| 127 | 2.3.10.31 | **增加我的活动，历史活动页左边框活动列表的搜索功能** |  | 15d | 2012-12-02 | 2012-12-23 | 0d |  | 160h |
| 128 | 2.3.10.31.1 | 增加我的活动，历史活动页左边框活动列表的搜索功能-设计及前端 | manual | 4d | 2012-12-02 | 2012-12-05 |  | 蔡钟毅; 郑玲 | 64h |
| 129 | 2.3.10.31.2 | 增加我的活动，历史活动页左边框活动列表的搜索功能-编码 | manual | 4d | 2012-12-19 | 2012-12-23 |  | 金广亮; 王渝友; 徐兵 | 96h |

Notes:
- 108: 搭车地图扩展为活动地图，并能多地点支持，自主灵活配置，包括停留设置，路线自定义，多地点天气，距离及时间计算
- 119: 对于活动计划列表，管理员可以手动添加效果标注
- 123: 对于活动成员列表的管理员角色打印页，增加手动添加效果标注框和备注框 / 并且重新各种不同角色的打印版面
- 127: 增加我的活动，历史活动页左边框活动列表的搜索功能 / 历史活动日历查找功能

| ID | WBS | Task | Type | Duration | Start | Finish | Total slack | Resources | Work |
| --- | --- | --- | --- | --- | --- | --- | --- | --- | --- |
| 130 | 2.3.10.32 | **活动财务修改记录** |  | 15d | 2012-12-09 | 2012-12-29 | 0d |  | 160h |
| 131 | 2.3.10.32.1 | 活动财务修改记录-设计 | manual | 4d | 2012-12-09 | 2012-12-12 |  | 蔡钟毅; 郑玲 | 64h |
| 132 | 2.3.10.32.2 | 活动财务修改记录-编码 | manual | 4d | 2012-12-26 | 2012-12-29 |  | 金广亮; 徐兵; 王渝友 | 96h |
| 133 | 2.3.10.33 | **活动多财务多方式多账号支持** |  | 15d | 2012-12-12 | 2013-01-01 | 0d |  | 72h |
| 134 | 2.3.10.33.1 | 活动多财务多方式多账号支持-设计 | manual | 3d | 2012-12-12 | 2012-12-14 |  |  |  |
| 135 | 2.3.10.33.2 | 活动多财务多方式多账号支持-编码 | manual | 3d | 2012-12-29 | 2013-01-01 |  | 金广亮; 王渝友; 徐兵 | 72h |
| 136 | 2.3.10.34 | **报名报名费选择已交费用，展开费用缴纳说明，带附件上传功能** |  | 18d | 2012-12-12 | 2013-01-05 | 0d |  | 104h |
| 137 | 2.3.10.34.1 | 报名报名费选择已交费用附加功能-设计 | manual | 2d | 2012-12-12 | 2012-12-13 |  | 蔡钟毅; 郑玲 | 32h |
| 138 | 2.3.10.34.2 | 报名报名费选择已交费用附加功能-编码 | manual | 3d | 2013-01-03 | 2013-01-05 |  | 金广亮; 王渝友; 徐兵 | 72h |
| 139 | 2.3.10.35 | 日历增加个人活动自定义时间段安排的打印 | manual | 4d | 2012-12-23 | 2012-12-26 |  | 徐蓓; 金广亮; 王渝友; 徐兵 | 128h |
| 140 | 2.3.10.36 | **首页无资料以访客身份登陆** |  | 19d | 2012-12-12 | 2013-01-07 | 0d |  | 376h |
| 141 | 2.3.10.36.1 | 首页无资料以访客身份登陆-页面设计及前端 | manual | 6d | 2012-12-12 | 2012-12-19 |  | 蔡钟毅; 郑玲 | 96h |
| 142 | 2.3.10.36.2 | 首页无资料以访客身份登陆-页面编码 | manual | 7d | 2012-12-30 | 2013-01-07 |  | 王薪杰; 王渝友; 徐兵; 金广亮; 胥鑫 | 280h |
| 143 | 2.3.10.37 | 完成第三方数据的融合 | manual | 31d | 2012-09-24 | 2012-11-05 |  | 汤仕海; 钟格致 | 496h |
| 144 | 2.3.11 | **测试** |  | 44d | 2013-01-01 | 2013-03-01 | 0d |  | 2200h |
| 145 | 2.3.11.1 | 性能测试 | manual | 35d | 2013-01-01 | 2013-02-18 |  | 卜晓锋; 金广亮; 王薪杰; 王渝友; 徐蓓; 胥鑫; 徐兵 | 1960h |
| 146 | 2.3.11.2 | 负载测试 | manual | 10d | 2013-02-18 | 2013-03-01 |  | 金广亮; 钟格致; 徐蓓 | 240h |
| 147 | 2.3.12 | 各页面性能测试，统计 | manual | 23d | 2013-01-01 | 2013-01-31 |  | 钟格致 | 184h |
| 148 | 2.3.13 | 更新设计规范 | manual | 23d | 2013-01-01 | 2013-01-31 |  | 郑玲 | 184h |
| 149 | 2.3.14 | 文档更新，总结，规范 | manual | 23d | 2013-02-01 | 2013-03-05 |  | 钟格致 | 184h |

Notes:
- 133: 报名，活动管理多财务员支持
- 143: 重新设计活动创建架构，可以自定义组合，将包括融合多种交通方式，酒店，饭店，活动地点，预订提醒等自主灵活形式配置
